# Movimiento Ecologista

Schedule from MS Project, 2018-05-14 to 2018-08-02, costs in $, A marks actual dates.

## Calendars

- Estándar: Mon-Fri 09:00-13:00, 15:00-19:00; Sat-Sun off.

## Resources

| Resource | Rate |
| --- | --- |
| Líder de proyecto | 113 |
| Analista | 100 |
| Diseñador | 94 |
| Programador 1 | 94 |
| Programador 2 | 94 |
| Programador 3 | 94 |
| Programador 4 | 94 |
| Téster | 88 |
| Bolígrafo | 3 |
| Computadora (Desgaste de equipo) | 8 |
| Hojas de papel | 1 |
| Internet | 13 |
| Luz | 5 |
| Mobiliario (Desgaste) | 5 |
| Transporte | 20 |

## Schedule

| ID | WBS | Task | Duration | Start | Finish | Predecessors | Complete | Remaining | Total slack | Free slack | Constraint | Resources | Work | Actual work | Cost | Actual cost |
| --- | --- | --- | --- | --- | --- | --- | --- | --- | --- | --- | --- | --- | --- | --- | --- | --- |
| 1 | 1 | **MPPP** | 58.5d | 2018-05-14 A | 2018-08-02 |  | 8% | 53.53d | 0d |  |  |  | 929h | 41.2h | 89,108 | 4,769.4 |
| 2 | 1.1 | **Inicio** | 1d | 2018-05-14 A | 2018-05-14 |  | 90% | 0.1d | 2d | 0d |  |  | 8h | 7.2h | 936 | 842.4 |
| 3 | 1.1.1 | Acta de inicio | 1d | 2018-05-14 A | 2018-05-14 |  | 90% | 0.1d | 2d | 0d | start no earlier than 2018-05-14 | Líder de proyecto; Bolígrafo; Hojas de papel; Transporte; Computadora (Desgaste de equipo) | 8h | 7.2h | 936 | 842.4 |
| 4 | 1.2 | **Planeación** | 7.75d | 2018-05-15 A | 2018-05-24 | 2 | 55% | 3.5d | 0d |  |  |  | 62h | 34h | 7,158 | 3,927 |
| 5 | 1.2.1 | Presupuesto | 2d | 2018-05-15 | 2018-05-16 | 3 |  |  | 5.75d |  | finish no earlier than 2018-05-15 | Líder de proyecto; Computadora (Desgaste de equipo); Luz; Mobiliario (Desgaste) | 16h |  | 1,826 |  |
| 6 | 1.2.2 | Estudio de roles | 1d | 2018-05-17 A | 2018-05-17 A | 5 | 100% |  |  |  |  | Líder de proyecto; Computadora (Desgaste de equipo); Luz; Mobiliario (Desgaste) | 8h | 8h | 922 | 922 |
| 7 | 1.2.3 | Selección del ciclo de vida | 2h | 2018-05-18 A | 2018-05-18 A | 6 | 100% |  |  |  |  | Líder de proyecto; Computadora (Desgaste de equipo); Luz; Mobiliario (Desgaste) | 2h | 2h | 244 | 244 |
| 8 | 1.2.4 | Declaración del alcance | 1d | 2018-05-18 A | 2018-05-21 A | 7 | 100% |  |  |  |  | Líder de proyecto; Computadora (Desgaste de equipo); Luz; Mobiliario (Desgaste) | 8h | 8h | 922 | 922 |
| 9 | 1.2.5 | Estructura de desglose de trabajo (EDT) | 2d | 2018-05-21 A | 2018-05-23 A | 8 | 100% |  |  |  | finish no earlier than 2018-05-18 | Líder de proyecto; Computadora (Desgaste de equipo); Luz; Mobiliario (Desgaste); Internet | 16h | 16h | 1,839 | 1,839 |
| 10 | 1.2.6 | Plan de comunicación | 6h | 2018-05-23 | 2018-05-23 | 9 |  |  | 0d |  | start no earlier than 2018-05-21 | Líder de proyecto; Computadora (Desgaste de equipo); Luz; Mobiliario (Desgaste) | 6h |  | 696 |  |
| 11 | 1.2.7 | Póliticas de calidad | 6h | 2018-05-24 | 2018-05-24 | 10 |  |  | 0d |  | start no earlier than 2018-05-22 | Líder de proyecto; Computadora (Desgaste de equipo); Internet; Luz; Mobiliario (Desgaste) | 6h |  | 709 |  |
| 12 | 1.3 | **Análisis** | 5d | 2018-05-24 | 2018-05-31 | 4 |  |  | 0d |  |  |  | 36h |  | 3,579 |  |
| 13 | 1.3.1 | Análisis de provedores | 1d | 2018-05-24 | 2018-05-25 | 11 |  |  | 0d |  |  | Analista; Computadora (Desgaste de equipo); Internet; Luz; Mobiliario (Desgaste) | 8h |  | 831 |  |
| 14 | 1.3.2 | Evaluar provedores de requerimientos | 1d | 2018-05-25 | 2018-05-28 | 13 |  |  | 0d |  |  | Analista; Bolígrafo; Hojas de papel | 8h |  | 804 |  |
| 15 | 1.3.3 | Selección de la técnica de recolección de datos | 4h | 2018-05-28 | 2018-05-29 | 14 |  |  | 0d |  |  | Analista; Computadora (Desgaste de equipo); Luz; Mobiliario (Desgaste) | 4h |  | 418 |  |
| 16 | 1.3.4 | Aplicación de a técnica de recolección de datos seleccionada | 4h | 2018-05-29 | 2018-05-29 | 15 |  |  | 0d |  |  |  |  |  |  |  |
| 17 | 1.3.5 | Especificación de requisitos de software (ERS) | 2d | 2018-05-29 | 2018-05-31 | 16 |  |  | 0d |  |  | Diseñador; Bolígrafo; Computadora (Desgaste de equipo); Hojas de papel; Luz; Mobiliario (Desgaste) | 16h |  | 1,526 |  |
| 18 | 1.4 | **Diseño** | 7d | 2018-05-31 | 2018-06-11 | 12 |  |  | 0d |  |  |  | 56h |  | 5,349 |  |
| 19 | 1.4.1 | Diagramas UML | 2d | 2018-05-31 | 2018-06-04 | 17 |  |  | 0d |  |  | Diseñador; Computadora (Desgaste de equipo); Luz; Mobiliario (Desgaste) | 16h |  | 1,522 |  |
| 20 | 1.4.2 | Diagramas de la Base de datos | 2d | 2018-06-04 | 2018-06-06 | 19 |  |  | 0d |  |  | Diseñador; Computadora (Desgaste de equipo); Luz; Mobiliario (Desgaste); Internet | 16h |  | 1,535 |  |
| 21 | 1.4.3 | Mapa de navegación | 1d | 2018-06-06 | 2018-06-07 | 20 |  |  | 0d |  |  | Computadora (Desgaste de equipo); Diseñador; Luz; Mobiliario (Desgaste) | 8h |  | 770 |  |
| 22 | 1.4.4 | Bocetos | 2d | 2018-06-07 | 2018-06-11 | 21, 20 |  |  | 0d |  |  | Computadora (Desgaste de equipo); Luz; Mobiliario (Desgaste); Diseñador | 16h |  | 1,522 |  |
| 23 | 1.5 | **Codificación** | 22d | 2018-06-11 | 2018-07-11 | 18 |  |  | 0d |  |  |  | 648h |  | 60,974 |  |
| 24 | 1.5.1 | Base de datos | 2d | 2018-06-11 | 2018-06-13 | 22 |  |  | 20d |  |  | Programador 1; Computadora (Desgaste de equipo); Internet; Luz; Mobiliario (Desgaste) | 16h |  | 1,535 |  |
| 25 | 1.5.2 | Maquetación | 3d | 2018-06-11 | 2018-06-14 | 22 |  |  | 0d |  |  | Programador 4; Computadora (Desgaste de equipo); Internet; Luz; Mobiliario (Desgaste) | 24h |  | 2,287 |  |
| 26 | 1.5.3 | Frontend | 9d | 2018-06-14 | 2018-06-27 | 25 |  |  | 0d |  |  | Programador 1; Programador 2; Programador 3; Programador 4 | 288h |  | 27,072 |  |
| 27 | 1.5.4 | Backend | 10d | 2018-06-27 | 2018-07-11 | 26 |  |  | 0d |  |  | Programador 1; Programador 2; Programador 3; Programador 4 | 320h |  | 30,080 |  |

| ID | WBS | Task | Duration | Start | Finish | Predecessors | Total slack | Resources | Work | Cost |
| --- | --- | --- | --- | --- | --- | --- | --- | --- | --- | --- |
| 28 | 1.6 | **Pruebas** | 12d | 2018-07-11 | 2018-07-27 | 23 | 0d |  | 96h | 8,510 |
| 29 | 1.6.1 | Pruebas unitarias | 6d | 2018-07-11 | 2018-07-19 | 27 | 0d | Luz; Mobiliario (Desgaste); Téster; Computadora (Desgaste de equipo); Internet | 48h | 4,255 |
| 30 | 1.6.2 | Pruebas de módulo | 6d | 2018-07-19 | 2018-07-27 | 29 | 0d | Computadora (Desgaste de equipo); Internet; Luz; Mobiliario (Desgaste); Téster | 48h | 4,255 |
| 31 | 1.7 | **Implementación** | 3.5d | 2018-07-27 | 2018-08-02 | 28 | 0d |  | 20h | 2,215 |
| 32 | 1.7.1 | Selección del hosting | 1d | 2018-07-27 | 2018-07-30 | 30 | 0d |  |  |  |
| 33 | 1.7.2 | Subir el sitio web | 4h | 2018-07-30 | 2018-07-31 | 32 | 0d | Téster; Computadora (Desgaste de equipo); Internet; Luz; Mobiliario (Desgaste) | 4h | 383 |
| 34 | 1.7.3 | Pruebas de sistema | 2d | 2018-07-31 | 2018-08-02 | 33 | 0d | Líder de proyecto; Bolígrafo; Hojas de papel; Transporte | 16h | 1,832 |
| 35 | 1.8 | **Cierre del proyecto** | 0.25d | 2018-08-02 | 2018-08-02 | 31 | 0d |  | 3h | 387 |
| 36 | 1.8.1 | Carta de aceptación | 1h | 2018-08-02 | 2018-08-02 | 33 | 0.12d | Líder de proyecto; Bolígrafo; Hojas de papel; Transporte | 1h | 137 |
| 37 | 1.8.2 | Acta de cierre del proyecto | 2h | 2018-08-02 | 2018-08-02 | 33 | 0d | Líder de proyecto; Bolígrafo; Hojas de papel; Transporte | 2h | 250 |
